Schedule from MS Project, 2022-01-03 to 2022-08-09, status date 2022-04-01, costs in $, A marks actual dates.

## Calendars

- Standard: Mon-Fri 08:00-12:00, 13:00-17:00; Sat-Sun off.
- 24 часа: Mon-Thu 08:30-12:00, 13:00-17:30; Fri 08:30-12:00, 13:00-16:30; Sat-Sun 00:00-24:00. Exceptions (off unless hours are given): 2022-01-07, 2022-02-23, 2022-03-08, 2022-05-01, 2022-05-09, 2022-06-12.

## Resources

| Resource | Group | Rate | Cost per use |
| --- | --- | --- | --- |
| Инженер-конструктор | Инженеры и техники | 90 |  |
| Техник | Инженеры и техники | 50 |  |
| Инженер-испытатель | Инженеры и техники | 80 |  |
| Руководитель-проекта |  |  | 80000 |
| Лаборатория |  |  | 120000 |
| Комплектующие для счетчика тепловой энергии |  |  | 20000 |
| Комплектующие для электросчетчика |  |  | 12000 |

## Schedule

| ID | WBS | Task | Type | Duration | Start | Finish | Predecessors | Complete | Remaining | Total slack | Constraint | Calendar | Resources | Work | Actual work | Cost | Actual cost |
| --- | --- | --- | --- | --- | --- | --- | --- | --- | --- | --- | --- | --- | --- | --- | --- | --- | --- |
| 1 | 1 | **Предварительная фаза** |  | 7d | 2022-01-03 08:00 A | 2022-01-11 17:00 A |  | 100% |  |  |  |  |  | 117.6h | 117.6h | 18,080 | 18,080 |
| 2 | 1.1 | Предварительное экономическое обоснование проекта | manual | 7d | 2022-01-03 08:00 A | 2022-01-11 17:00 A |  | 100% |  |  |  |  | Руководитель-проекта [10%] | 5.6h | 5.6h | 8,000 | 8,000 |
| 3 | 1.2 | Разработка технического задания | manual | 7d | 2022-01-03 08:00 A | 2022-01-11 17:00 A |  | 100% |  |  |  |  | Инженер-конструктор [200%] | 112h | 112h | 10,080 | 10,080 |
| 4 | 2 | **Технические проект** |  | 47d | 2022-01-03 08:00 A | 2022-03-08 17:00 | 1 | 99% | 0d | 0d |  |  |  | 2051.55h | 2051.55h | 271,470 | 271,470 |
| 5 | 2.1 | Изготовление макета счетчика тепловой энергии | manual | 30.06d | 2022-01-03 08:00 A | 2022-02-14 08:30 |  | 99% | 0d |  |  |  | Инженер-конструктор [250%]; Техник; Лаборатория [10%]; Комплектующие для счетчика тепловой энергии [270%] | 893.4h | 893.4h | 98,137.5 | 98,137.5 |
| 6 | 2.2 | Изготовление макета электросчетчика | manual | 20.06d | 2022-01-03 08:00 A | 2022-01-31 08:30 |  | 99% | 0d |  |  |  | Инженер-конструктор [150%]; Техник; Лаборатория [7%]; Комплектующие для электросчетчика [250%] | 425.23h | 425.23h | 50,092.5 | 50,092.5 |
| 7 | 2.3 | Проведение испытаний на макете счетчика тепловой энергии | manual | 15d | 2022-02-14 08:00 A | 2022-03-04 17:00 A | 5 | 100% |  |  |  |  | Инженер-конструктор; Инженер-испытатель [75%]; Техник; Лаборатория [20%] | 443.77h | 443.77h | 53,670 | 53,670 |
| 8 | 2.4 | Проведение испытаний на макете электросчетчика | manual | 10d | 2022-01-31 08:00 A | 2022-02-11 17:00 A | 6 | 100% |  |  |  |  | Инженер-конструктор; Инженер-испытатель [75%]; Техник; Лаборатория [15%] | 274.75h | 274.75h | 36,850 | 36,850 |
| 9 | 2.5 | Согласование и утверждение технического проекта | manual | 2d | 2022-03-07 08:00 A | 2022-03-08 17:00 A | 8, 7 | 100% |  |  |  |  | Руководитель-проекта [40%]; Инженер-конструктор [50%] | 14.4h | 14.4h | 32,720 | 32,720 |
| 10 | 3 | **Рабочий проект** |  | 157d | 2022-01-03 08:00 A | 2022-08-09 17:00 |  | 72% | 43.58d | 0d |  |  |  | 6285.09h | 4444.52h | 636,520 | 458,160 |
| 11 | 3.1 | Разработка рабочих и сборочных чертежей счетчика тепловой энергии | manual | 40d | 2022-01-03 08:00 A | 2022-02-25 17:00 A |  | 100% |  |  |  |  | Инженер-конструктор [400%] | 1280h | 1280h | 115,200 | 115,200 |
| 12 | 3.2 | Разработка рабочих и сборочных чертежей электросчетчика | manual | 35d | 2022-01-03 08:00 A | 2022-02-18 17:00 A |  | 100% |  |  |  |  | Инженер-конструктор [300%] | 840h | 840h | 75,600 | 75,600 |
| 13 | 3.3 | Изготовление опытного образца счетчика тепловой энергии | manual | 42d | 2022-02-14 08:00 A | 2022-04-12 17:00 | 11SS+30d? | 80% | 8.57d |  |  |  | Инженер-конструктор [350%]; Техник; Лаборатория [30%]; Комплектующие для счетчика тепловой энергии [60%] | 1721.1h | 1363.65h | 178,640 | 152,360 |
| 14 | 3.4 | Изготовление опытного образца электросчетчика | manual | 20d | 2022-02-14 08:00 A | 2022-03-11 17:00 A | 12FF+3w? | 100% |  |  |  |  | Инженер-конструктор [250%]; Техник; Лаборатория [25%]; Комплектующие для электросчетчика [240%] | 633.38h | 633.38h | 86,000 | 86,000 |
| 15 | 3.5 | Испытание опытного образца счетчика тепловой энергии | manual | 25d | 2022-04-25 08:00 | 2022-05-27 17:00 | 13, 14 |  |  |  |  |  | Инженер-конструктор [200%]; Инженер-испытатель; Техник; Лаборатория [0.2%] | 956.71h |  | 74,720 |  |
| 16 | 3.6 | Испытание опытного образца электросчетчика | manual | 10d | 2022-03-21 08:00 A | 2022-04-01 17:00 A | 14 | 100% |  |  |  |  | Инженер-конструктор [150%]; Инженер-испытатель; Техник | 327.5h | 327.5h | 25,000 | 25,000 |
| 17 | 3.7 | Устранение конструктивных недостатков счетчика тепловой энергии, доработка конструкции на технологичность | manual | 7d | 2022-05-30 08:00 | 2022-06-07 17:00 | 15 |  |  |  |  |  | Инженер-конструктор [400%] | 224h |  | 20,160 |  |
| 18 | 3.8 | Устранение конструктивных недостатков электросчетчика, дора-ботка конструкции на технологичность | manual | 7d | 2022-04-04 08:00 A | 2022-04-12 17:00 | 16 | 14% | 6d |  |  |  |  |  |  |  |  |
| 19 | 3.9 | Подготовка технической документации для передачи заказчику | manual | 7d | 2022-06-13 08:00 | 2022-06-21 17:00 | 17, 18 |  |  |  |  |  | Инженер-конструктор [500%]; Руководитель-проекта [40%] | 302.4h |  | 57,200 |  |
| 20 | 3.10 | Подписание акта приемки работ | milestone, manual | 0d | 2022-08-09 17:00 A | 2022-08-09 17:00 A | 19 | 100% |  |  |  |  | Руководитель-проекта [5%] |  |  | 4,000 | 4,000 |
| 21 | 4 | **Совещания 26** |  | 262.12d | 2022-01-03 08:30 A | 2022-06-27 09:30 |  | 50% | 131.06d | 0d |  | 24 часа |  |  |  |  |  |
| 22 | 4.1 | Совещания 1 | manual | 1h | 2022-01-03 08:30 A | 2022-01-03 09:30 A |  | 100% |  |  | start no earlier than 2022-01-03 08:30 | 24 часа |  |  |  |  |  |
| 23 | 4.2 | Совещания 2 | manual | 1h | 2022-01-10 08:30 A | 2022-01-10 09:30 A |  | 100% |  |  | start no earlier than 2022-01-10 08:30 | 24 часа |  |  |  |  |  |
| 24 | 4.3 | Совещания 3 | manual | 1h | 2022-01-17 08:30 A | 2022-01-17 09:30 A |  | 100% |  |  | start no earlier than 2022-01-17 08:30 | 24 часа |  |  |  |  |  |
| 25 | 4.4 | Совещания 4 | manual | 1h | 2022-01-25 08:30 A | 2022-01-25 09:30 A |  | 100% |  |  | start no earlier than 2022-01-25 08:30 | 24 часа |  |  |  |  |  |
| 26 | 4.5 | Совещания 5 | manual | 1h | 2022-01-31 08:30 A | 2022-01-31 09:30 A |  | 100% |  |  | start no earlier than 2022-01-31 08:30 | 24 часа |  |  |  |  |  |
| 27 | 4.6 | Совещания 6 | manual | 1h | 2022-02-07 08:30 A | 2022-02-07 09:30 A |  | 100% |  |  | start no earlier than 2022-02-07 08:30 | 24 часа |  |  |  |  |  |
| 28 | 4.7 | Совещания 7 | manual | 1h | 2022-02-14 08:30 A | 2022-02-14 09:30 A |  | 100% |  |  | start no earlier than 2022-02-14 08:30 | 24 часа |  |  |  |  |  |
| 29 | 4.8 | Совещания 8 | manual | 1h | 2022-02-21 08:30 A | 2022-02-21 09:30 A |  | 100% |  |  | start no earlier than 2022-02-21 08:30 | 24 часа |  |  |  |  |  |
| 30 | 4.9 | Совещания 9 | manual | 1h | 2022-02-28 08:30 A | 2022-02-28 09:30 A |  | 100% |  |  | start no earlier than 2022-02-28 08:30 | 24 часа |  |  |  |  |  |
| 31 | 4.10 | Совещания 10 | manual | 1h | 2022-03-07 08:30 A | 2022-03-07 09:30 A |  | 100% |  |  | start no earlier than 2022-03-07 08:30 | 24 часа |  |  |  |  |  |
| 32 | 4.11 | Совещания 11 | manual | 1h | 2022-03-14 08:30 A | 2022-03-14 09:30 A |  | 100% |  |  | start no earlier than 2022-03-14 08:30 | 24 часа |  |  |  |  |  |
| 33 | 4.12 | Совещания 12 | manual | 1h | 2022-03-21 08:30 A | 2022-03-21 09:30 A |  | 100% |  |  | start no earlier than 2022-03-21 08:30 | 24 часа |  |  |  |  |  |
| 34 | 4.13 | Совещания 13 | manual | 1h | 2022-03-28 08:30 A | 2022-03-28 09:30 A |  | 100% |  |  | start no earlier than 2022-03-28 08:30 | 24 часа |  |  |  |  |  |
| 35 | 4.14 | Совещания 14 | manual | 1h | 2022-04-04 08:30 | 2022-04-04 09:30 |  |  |  |  | start no earlier than 2022-04-04 08:30 | 24 часа |  |  |  |  |  |
| 36 | 4.15 | Совещания 15 | manual | 1h | 2022-04-11 08:30 | 2022-04-11 09:30 |  |  |  |  | start no earlier than 2022-04-11 08:30 | 24 часа |  |  |  |  |  |
| 37 | 4.16 | Совещания 16 | manual | 1h | 2022-04-18 08:30 | 2022-04-18 09:30 |  |  |  |  | start no earlier than 2022-04-18 08:30 | 24 часа |  |  |  |  |  |
| 38 | 4.17 | Совещания 17 | manual | 1h | 2022-04-25 08:30 | 2022-04-25 09:30 |  |  |  |  | start no earlier than 2022-04-25 08:30 | 24 часа |  |  |  |  |  |
| 39 | 4.18 | Совещания 18 | manual | 1h | 2022-05-02 08:30 | 2022-05-02 09:30 |  |  |  |  | start no earlier than 2022-05-02 08:30 | 24 часа |  |  |  |  |  |
| 40 | 4.19 | Совещания 19 | manual | 1h | 2022-05-10 08:30 | 2022-05-10 09:30 |  |  |  |  | start no earlier than 2022-05-10 08:30 | 24 часа |  |  |  |  |  |
| 41 | 4.20 | Совещания 20 | manual | 1h | 2022-05-16 08:30 | 2022-05-16 09:30 |  |  |  |  | start no earlier than 2022-05-16 08:30 | 24 часа |  |  |  |  |  |
| 42 | 4.21 | Совещания 21 | manual | 1h | 2022-05-23 08:30 | 2022-05-23 09:30 |  |  |  |  | start no earlier than 2022-05-23 08:30 | 24 часа |  |  |  |  |  |
| 43 | 4.22 | Совещания 22 | manual | 1h | 2022-05-30 08:30 | 2022-05-30 09:30 |  |  |  |  | start no earlier than 2022-05-30 08:30 | 24 часа |  |  |  |  |  |
| 44 | 4.23 | Совещания 23 | manual | 1h | 2022-06-06 08:30 | 2022-06-06 09:30 |  |  |  |  | start no earlier than 2022-06-06 08:30 | 24 часа |  |  |  |  |  |
| 45 | 4.24 | Совещания 24 | manual | 1h | 2022-06-13 08:30 | 2022-06-13 09:30 |  |  |  |  | start no earlier than 2022-06-13 08:30 | 24 часа |  |  |  |  |  |
| 46 | 4.25 | Совещания 25 | manual | 1h | 2022-06-20 08:30 | 2022-06-20 09:30 |  |  |  |  | start no earlier than 2022-06-20 08:30 | 24 часа |  |  |  |  |  |
